# 2017-02-13_Project-Planning_V1

Schedule from MS Project, 2017-02-13 to 2017-04-07, 4 hours a day, A marks actual dates.

## Calendars

- Standaard: Mon 08:20-12:20; Tue off; Wed-Fri 08:20-12:20; Sat-Sun off. Exceptions (off unless hours are given): 2017-02-27 to 2017-03-03 (Carnavals vakantie).

## Resources

| Resource |
| --- |
| Tarik |
| Santino |

## Schedule

| ID | WBS | Task | Type | Duration | Start | Finish | Predecessors | Complete | Total slack | Free slack | Resources | Work | Actual work |
| --- | --- | --- | --- | --- | --- | --- | --- | --- | --- | --- | --- | --- | --- |
| 1 | 1 | **Kerntaak 1** |  | 7.75d | 2017-02-13 08:20 A | 2017-02-24 11:20 A |  | 100% |  |  |  | 55h | 55h |
| 2 | 1.1 | **WP 1.1** |  | 2.75d | 2017-02-13 08:20 A | 2017-02-16 11:20 A |  | 100% |  |  |  | 21h | 21h |
| 3 | 1.1.1 | Uitgewerkt interview |  | 3h | 2017-02-13 08:20 A | 2017-02-13 11:20 A |  | 100% |  |  | Tarik; Santino | 6h | 6h |
| 4 | 1.1.2 | Hernieuwde opdracht |  | 2h | 2017-02-13 11:20 A | 2017-02-15 09:20 A | 3 | 100% |  |  | Santino | 2h | 2h |
| 5 | 1.1.3 | Offerte |  | 3h | 2017-02-13 11:20 A | 2017-02-15 10:20 A | 3 | 100% |  |  | Tarik | 3h | 3h |
| 6 | 1.1.4 | Prototype |  | 5h | 2017-02-15 10:20 A | 2017-02-16 11:20 A | 5 | 100% |  |  | Tarik; Santino | 10h | 10h |
| 7 | 1.2 | **WP 1.2** |  | 0.75d | 2017-02-16 11:20 A | 2017-02-17 10:20 A | 2 | 100% |  |  |  | 6h | 6h |
| 8 | 1.2.1 | Plan van aanpak |  | 3h | 2017-02-16 11:20 A | 2017-02-17 10:20 A |  | 100% |  |  | Santino | 3h | 3h |
| 9 | 1.2.2 | Globale Planning |  | 3h | 2017-02-16 11:20 A | 2017-02-17 10:20 A |  | 100% |  |  | Tarik | 3h | 3h |
| 10 | 1.3 | **WP 1.3** |  | 1.75d | 2017-02-17 10:20 A | 2017-02-22 09:20 A | 7 | 100% |  |  |  | 7h | 7h |
| 11 | 1.3.1 | Use Case Diagram en Template |  | 4h | 2017-02-17 10:20 A | 2017-02-20 10:20 A |  | 100% |  |  | Tarik | 4h | 4h |
| 12 | 1.3.2 | Activiteitendiagrammen |  | 3h | 2017-02-20 10:20 A | 2017-02-22 09:20 A | 11 | 100% |  |  | Tarik | 3h | 3h |
| 13 | 1.4 | **WP 1.4** |  | 4.25d | 2017-02-17 10:20 A | 2017-02-24 11:20 A |  | 100% |  |  |  | 12h | 12h |
| 14 | 1.4.1 | Modeldictionary |  | 3h | 2017-02-22 09:20 A | 2017-02-22 12:20 A | 12 | 100% |  |  | Tarik | 3h | 3h |
| 15 | 1.4.2 | Klassendiagram |  | 3h | 2017-02-23 08:20 A | 2017-02-23 11:20 A | 14 | 100% |  |  | Tarik | 3h | 3h |
| 16 | 1.4.3 | Datadictionary |  | 2h | 2017-02-17 10:20 A | 2017-02-17 12:20 A | 8 | 100% |  |  | Santino | 2h | 2h |
| 17 | 1.4.4 | Sequentiediagrammen |  | 4h | 2017-02-23 11:20 A | 2017-02-24 11:20 A | 15 | 100% |  |  | Tarik | 4h | 4h |
| 18 | 1.5 | **WP 1.5** |  | 2.25d | 2017-02-20 08:20 A | 2017-02-23 09:20 A |  | 100% |  |  |  | 9h | 9h |
| 19 | 1.5.1 | Taakverdeling Ontwikkelomgeving |  | 2h | 2017-02-20 08:20 A | 2017-02-20 10:20 A | 16 | 100% |  |  | Santino | 2h | 2h |
| 20 | 1.5.2 | Materialenlijst: Hard- en software |  | 1h | 2017-02-20 10:20 A | 2017-02-20 11:20 A | 19 | 100% |  |  | Santino | 1h | 1h |
| 21 | 1.5.3 | Back-up procedure |  | 2h | 2017-02-20 11:20 A | 2017-02-22 09:20 A | 20 | 100% |  |  | Santino | 2h | 2h |
| 22 | 1.5.4 | Verslag over de installatie, configuratie en testen. |  | 4h | 2017-02-22 09:20 A | 2017-02-23 09:20 A | 21 | 100% |  |  | Santino | 4h | 4h |
| 23 | 2 | Kerntaak 1 INLEVEREN | milestone, manual | 0d | 2017-02-24 08:20 | 2017-02-24 08:20 |  |  |  |  |  |  |  |
| 24 | 3 | **Kerntaak 2** |  | 4.25d | 2017-02-24 11:20 | 2017-03-10 12:20 | 1 |  | 11d | 0d |  | 20.5h |  |
| 25 | 3.1 | **WP 2.1** |  | 1.5d | 2017-02-24 11:20 | 2017-03-08 09:20 |  |  | 11d | 0d |  | 8h |  |
| 26 | 3.1.1 | Organisatieonderzoek over reeds gebruikte databases |  | 2h | 2017-02-24 11:20 | 2017-03-06 09:20 |  |  | 9.12d | 0d | Tarik | 2h |  |
| 27 | 3.1.2 | Normalisatie Database en datadictionary bijwerken |  | 2h | 2017-03-06 09:20 | 2017-03-06 11:20 | 26 |  | 10d | 0d | Tarik | 2h |  |
| 28 | 3.1.3 | Database bouwen |  | 2h | 2017-03-06 11:20 | 2017-03-08 09:20 | 27 |  | 9.12d | 0d | Tarik | 2h |  |
| 29 | 3.1.4 | Procedure databasegegevens |  | 2h | 2017-02-24 11:20 | 2017-03-06 09:20 |  |  | 10.62d |  | Santino | 2h |  |

| ID | WBS | Task | Type | Duration | Start | Finish | Predecessors | Total slack | Free slack | Deadline | Resources | Work |
| --- | --- | --- | --- | --- | --- | --- | --- | --- | --- | --- | --- | --- |
| 30 | 3.2 | **WP 2.2** |  | 0.75d | 2017-03-08 09:20 | 2017-03-08 12:20 | 25 | 11d | 0d |  |  | 4.5h |
| 31 | 3.2.1 | Taakverdeling realisatie applicatie |  | 1h | 2017-03-08 09:20 | 2017-03-08 10:20 |  | 9.62d | 0d |  | Santino | 1h |
| 32 | 3.2.2 | Materialen- en middelenlijst voor het applicatie |  | 2h | 2017-03-08 10:20 | 2017-03-08 12:20 | 31 | 9.62d | 0d |  | Santino | 2h |
| 33 | 3.2.3 | Klassendiagram vanuit Visual Studio |  | 0.5h | 2017-03-08 09:20 | 2017-03-08 09:50 | 28 | 10.38d | 0d |  | Tarik | 0.5h |
| 34 | 3.2.4 | Werkende solution en gesperkverslag |  | 1h | 2017-03-08 09:50 | 2017-03-08 10:50 | 33 | 10.38d |  |  | Tarik | 1h |
| 35 | 3.3 | **WP 2.3** |  | 2d | 2017-03-09 08:20 | 2017-03-10 12:20 | 30 | 11d |  |  |  | 8h |
| 36 | 3.3.1 | Gedetailleerd testplan |  | 2h | 2017-03-09 08:20 | 2017-03-09 10:20 |  | 10d | 0d |  | Santino | 2h |
| 37 | 3.3.2 | Lijst van test-tools |  | 1h | 2017-03-09 10:20 | 2017-03-09 11:20 | 36 | 10d | 0d |  | Santino | 1h |
| 38 | 3.3.3 | Uitgevoerde test en documentatie van de resultaten (van de test) |  | 2h | 2017-03-09 11:20 | 2017-03-10 09:20 | 37 | 10d | 0d |  | Santino | 2h |
| 39 | 3.3.4 | Aanpassingen aan de applicatie |  | 3h | 2017-03-10 09:20 | 2017-03-10 12:20 | 38 | 10d |  |  | Tarik | 3h |
| 40 | 4 | Kerntaak 2 INLEVEREN | milestone, manual | 0d | 2017-03-30 08:20 | 2017-03-30 08:20 |  |  |  |  |  |  |
| 41 | 5 | **Kerntaak 3** |  | 5d | 2017-03-13 08:20 | 2017-03-20 12:20 | 24 | 11d |  |  |  | 11h |
| 42 | 5.1 | **WP 3.1** |  | 0.5d | 2017-03-13 08:20 | 2017-03-13 10:20 |  | 11d | 0d |  |  | 2h |
| 43 | 5.1.1 | Implementatieplan |  | 2h | 2017-03-13 08:20 | 2017-03-13 10:20 |  | 10d |  |  | Santino | 2h |
| 44 | 5.2 | **WP 3.2** |  | 3.5d | 2017-03-13 10:20 | 2017-03-17 12:20 | 42 | 11d | 0d |  |  | 5h |
| 45 | 5.2.1 | Acceptatietest maken |  | 1h | 2017-03-13 10:20 | 2017-03-13 11:20 |  | 10d | 0d |  | Santino | 1h |
| 46 | 5.2.2 | Acceptatietest ondertekend en uitgevoerd |  | 2h | 2017-03-13 11:20 | 2017-03-17 10:20 | 45 | 10d | 0d |  | Tarik; Santino | 2h |
| 47 | 5.2.3 | Verslag van de resultaten |  | 2h | 2017-03-17 10:20 | 2017-03-17 12:20 | 46 | 10d |  |  | Santino | 2h |
| 48 | 5.3 | **WP 3.3** |  | 0.5d | 2017-03-20 08:20 | 2017-03-20 10:20 | 44 | 11d | 0d |  |  | 2h |
| 49 | 5.3.1 | Documentatie van het implermenteren |  | 2h | 2017-03-20 08:20 | 2017-03-20 10:20 |  | 11d |  |  | Tarik | 2h |
| 50 | 5.4 | **WP 3.4** |  | 0.5d | 2017-03-20 10:20 | 2017-03-20 12:20 | 48 | 11d |  |  |  | 2h |
| 51 | 5.4.1 | Evaluatierapport |  | 2h | 2017-03-20 10:20 | 2017-03-20 12:20 |  | 11d |  |  | Tarik | 2h |
| 52 | 6 | Kerntaak 3 INLEVEREN | milestone, manual | 0d | 2017-04-07 08:20 | 2017-04-07 08:20 |  |  |  |  |  |  |
| 53 | 7 | Project deadline | manual | 4h? | 2017-04-07 08:20 | 2017-04-07 12:20 |  |  |  | 2017-04-07 12:20 |  |  |
